| id | name | percentDone | startDate | endDate | baselines | duration | cost | showInTimeline | rollup |
| --- | --- | --- | --- | --- | --- | --- | --- | --- | --- |
| 1000 | Launch SaaS Product | 50 | 2019-01-14 | 2019-03-16 | 2019-01-13T23:00:00 2019-03-15T23:00:00, 2019-01-13T23:00:00 2019-03-15T23:00:00, 2019-01-13T23:00:00 2019-03-15T23:00:00 |  |  |  |  |
| 1 | · Setup web server | 50 | 2019-01-14 | 2019-01-23 | 2019-01-13T23:00:00 2019-01-22T23:00:00, 2019-01-13T23:00:00 2019-01-22T23:00:00, 2019-01-13T23:00:00 2019-01-22T23:00:00 | 10 |  |  |  |
| 11 | · · Install Apache | 50 | 2019-01-14 | 2019-01-17 | 2019-01-13T23:00:00 2019-01-16T23:00:00, 2019-01-13T23:00:00 2019-01-16T23:00:00, 2019-01-13T23:00:00 2019-01-16T23:00:00 | 3 | 200 |  |  |
| 12 | · · Configure firewall | 50 | 2019-01-14 | 2019-01-17 | 2019-01-13T23:00:00 2019-01-16T23:00:00, 2019-01-13T23:00:00 2019-01-16T23:00:00, 2019-01-13T23:00:00 2019-01-16T23:00:00 | 3 | 1000 | True |  |
| 13 | · · Setup load balancer | 50 | 2019-01-14 | 2019-01-17 | 2019-01-13T23:00:00 2019-01-16T23:00:00, 2019-01-13T23:00:00 2019-01-16T23:00:00, 2019-01-13T23:00:00 2019-01-16T23:00:00 | 3 | 1200 |  |  |
| 14 | · · Configure ports | 50 | 2019-01-14 | 2019-01-16 | 2019-01-13T23:00:00 2019-01-15T23:00:00, 2019-01-13T23:00:00 2019-01-15T23:00:00, 2019-01-13T23:00:00 2019-01-15T23:00:00 | 2 | 750 |  |  |
| 15 | · · Run tests | 0 | 2019-01-21 | 2019-01-23 | 2019-01-20T23:00:00 2019-01-22T23:00:00, 2019-01-20T23:00:00 2019-01-22T23:00:00, 2019-01-20T23:00:00 2019-01-22T23:00:00 | 2 | 5000 |  |  |
| 2 | · Website Design | 60 | 2019-01-23 | 2019-02-13 | 2019-01-22T23:00:00 2019-02-08T23:00:00, 2019-01-22T23:00:00 2019-02-11T23:00:00, 2019-01-22T23:00:00 2019-02-12T23:00:00 |  |  |  |  |
| 21 | · · Contact designers | 70 | 2019-01-23 | 2019-01-30 | 2019-01-22T23:00:00 2019-01-25T23:00:00, 2019-01-22T23:00:00 2019-01-28T23:00:00, 2019-01-22T23:00:00 2019-01-29T23:00:00 | 5 | 500 |  |  |
| 22 | · · Create shortlist of three designers | 60 | 2019-01-30 | 2019-01-31 | 2019-01-27T23:00:00 2019-01-28T23:00:00, 2019-01-28T23:00:00 2019-01-29T23:00:00, 2019-01-29T23:00:00 2019-01-30T23:00:00 | 1 | 1000 |  |  |
| 23 | · · Select & review final design | 50 | 2019-01-31 | 2019-02-02 | 2019-01-28T23:00:00 2019-01-30T23:00:00, 2019-01-29T23:00:00 2019-01-31T23:00:00, 2019-01-30T23:00:00 2019-02-01T23:00:00 | 2 | 1000 | True |  |
| 24 | · · Inform management about decision | 100 | 2019-02-04 |  | 2019-01-30T23:00:00 2019-01-30T23:00:00, 2019-01-31T23:00:00 2019-01-31T23:00:00, 2019-02-01T23:00:00 2019-02-01T23:00:00 | 0 | 500 |  |  |
| 25 | · · Apply design to web site | 0 | 2019-02-04 | 2019-02-13 | 2019-01-30T23:00:00 2019-02-08T23:00:00, 2019-01-31T23:00:00 2019-02-11T23:00:00, 2019-02-03T23:00:00 2019-02-12T23:00:00 | 7 | 11000 |  |  |
| 3 | · Setup Test Strategy | 20 | 2019-01-14 | 2019-02-02 | 2019-01-13T23:00:00 2019-02-01T23:00:00, 2019-01-13T23:00:00 2019-02-01T23:00:00, 2019-01-13T23:00:00 2019-02-01T23:00:00 |  |  |  | True |
| 31 | · · Hire QA staff | 40 | 2019-01-14 | 2019-01-19 | 2019-01-13T23:00:00 2019-01-18T23:00:00, 2019-01-13T23:00:00 2019-01-18T23:00:00, 2019-01-13T23:00:00 2019-01-18T23:00:00 | 5 | 6000 |  |  |
| 33 | · · Write test specs | 9 | 2019-01-21 | 2019-02-02 | 2019-01-20T23:00:00 2019-02-01T23:00:00, 2019-01-20T23:00:00 2019-02-01T23:00:00, 2019-01-20T23:00:00 2019-02-01T23:00:00 | 5 |  |  |  |
| 331 | · · · Unit tests | 20 | 2019-01-21 | 2019-02-02 | 2019-01-20T23:00:00 2019-02-01T23:00:00, 2019-01-20T23:00:00 2019-02-01T23:00:00, 2019-01-20T23:00:00 2019-02-01T23:00:00 | 10 | 7000 | True |  |
| 332 | · · · UI unit tests / individual screens | 10 | 2019-01-21 | 2019-01-26 | 2019-01-20T23:00:00 2019-01-25T23:00:00, 2019-01-20T23:00:00 2019-01-25T23:00:00, 2019-01-20T23:00:00 2019-01-25T23:00:00 | 5 | 5000 | True |  |
| 333 | · · · Application tests | 0 | 2019-01-21 | 2019-02-02 | 2019-01-20T23:00:00 2019-02-01T23:00:00, 2019-01-20T23:00:00 2019-02-01T23:00:00, 2019-01-20T23:00:00 2019-02-01T23:00:00 | 10 | 2500 |  |  |
| 334 | · · · Monkey tests | 0 | 2019-01-21 | 2019-01-22 | 2019-01-20T23:00:00 2019-01-21T23:00:00, 2019-01-20T23:00:00 2019-01-21T23:00:00, 2019-01-20T23:00:00 2019-01-21T23:00:00 | 1 | 250 |  |  |
| 4 | · Application Implementation | 60 | 2019-02-04 | 2019-03-16 | 2019-02-03T23:00:00 2019-03-15T23:00:00, 2019-02-03T23:00:00 2019-03-15T23:00:00, 2019-02-03T23:00:00 2019-03-15T23:00:00 |  |  |  |  |
| 400 | · · Phase #1 |  | 2019-02-04 | 2019-02-09 | 2019-02-03T23:00:00 2019-02-08T23:00:00, 2019-02-03T23:00:00 2019-02-08T23:00:00, 2019-02-03T23:00:00 2019-02-08T23:00:00 |  |  |  |  |
| 41 | · · · Authentication module | 100 | 2019-02-04 | 2019-02-09 | 2019-02-03T23:00:00 2019-02-08T23:00:00, 2019-02-03T23:00:00 2019-02-08T23:00:00, 2019-02-03T23:00:00 2019-02-08T23:00:00 | 5 | 8000 |  |  |
| 42 | · · · Single sign on | 100 | 2019-02-04 | 2019-02-07 | 2019-02-03T23:00:00 2019-02-06T23:00:00, 2019-02-03T23:00:00 2019-02-06T23:00:00, 2019-02-03T23:00:00 2019-02-06T23:00:00 | 3 | 4700 |  |  |
| 43 | · · · Implement role based access | 0 | 2019-02-04 | 2019-02-08 | 2019-02-03T23:00:00 2019-02-07T23:00:00, 2019-02-03T23:00:00 2019-02-07T23:00:00, 2019-02-03T23:00:00 2019-02-07T23:00:00 | 4 | 5800 |  |  |
| 44 | · · · Basic test coverage | 0 | 2019-02-04 | 2019-02-07 | 2019-02-03T23:00:00 2019-02-06T23:00:00, 2019-02-03T23:00:00 2019-02-06T23:00:00, 2019-02-03T23:00:00 2019-02-06T23:00:00 | 3 | 7000 | True |  |
| 45 | · · · Verify high test coverage | 0 | 2019-02-11 | 2019-02-13 | 2019-02-11 2019-02-13, 2019-02-11 2019-02-13, 2019-02-11 2019-02-13 | 2 | 16000 |  |  |
| 46 | · · · Make backup | 0 | 2019-02-13 | 2019-02-13 | 2019-02-11 2019-02-11, 2019-02-12 2019-02-12, 2019-02-13 2019-02-13 | 0 | 500 | True |  |
| 401 | · · Phase #2 |  | 2019-02-11 | 2019-03-12 | 2019-02-10T23:00:00 2019-03-11T23:00:00, 2019-02-10T23:00:00 2019-03-11T23:00:00, 2019-02-10T23:00:00 2019-03-11T23:00:00 |  |  |  |  |
| 4011 | · · · Authentication module | 70 | 2019-02-11 | 2019-03-02 | 2019-02-10T23:00:00 2019-03-01T23:00:00, 2019-02-10T23:00:00 2019-03-01T23:00:00, 2019-02-10T23:00:00 2019-03-01T23:00:00 | 15 | 1200 |  |  |
| 4012 | · · · Single sign on | 60 | 2019-02-11 | 2019-02-16 | 2019-02-10T23:00:00 2019-02-15T23:00:00, 2019-02-10T23:00:00 2019-02-15T23:00:00, 2019-02-10T23:00:00 2019-02-15T23:00:00 | 5 | 2500 |  |  |
| 4013 | · · · Implement role based access | 50 | 2019-02-11 | 2019-03-12 | 2019-02-10T23:00:00 2019-03-11T23:00:00, 2019-02-10T23:00:00 2019-03-11T23:00:00, 2019-02-10T23:00:00 2019-03-11T23:00:00 | 21 | 4100 |  |  |
| 4014 | · · · Basic test coverage | 0 | 2019-02-11 | 2019-03-09 | 2019-02-10T23:00:00 2019-03-08T23:00:00, 2019-02-10T23:00:00 2019-03-08T23:00:00, 2019-02-10T23:00:00 2019-03-08T23:00:00 | 20 | 1100 |  |  |
| 4015 | · · · Verify high test coverage | 0 | 2019-02-11 | 2019-02-15 | 2019-02-10T23:00:00 2019-02-14T23:00:00, 2019-02-10T23:00:00 2019-02-14T23:00:00, 2019-02-10T23:00:00 2019-02-14T23:00:00 | 4 | 3000 |  |  |
| 402 | · · Acceptance phase |  | 2019-03-12 | 2019-03-16 | 2019-03-11T23:00:00 2019-03-15T23:00:00, 2019-03-11T23:00:00 2019-03-15T23:00:00, 2019-03-11T23:00:00 2019-03-15T23:00:00 |  |  |  |  |
| 4031 | · · · Company bug bash | 70 | 2019-03-12 | 2019-03-15 | 2019-03-11T23:00:00 2019-03-14T23:00:00, 2019-03-11T23:00:00 2019-03-14T23:00:00, 2019-03-11T23:00:00 2019-03-14T23:00:00 | 3 | 10000 |  |  |
| 4032 | · · · Test all web pages | 60 | 2019-03-12 | 2019-03-14 | 2019-03-11T23:00:00 2019-03-13T23:00:00, 2019-03-11T23:00:00 2019-03-13T23:00:00, 2019-03-11T23:00:00 2019-03-13T23:00:00 | 2 | 5000 |  |  |
| 4033 | · · · Verify no broken links | 50 | 2019-03-12 | 2019-03-16 | 2019-03-11T23:00:00 2019-03-15T23:00:00, 2019-03-11T23:00:00 2019-03-15T23:00:00, 2019-03-11T23:00:00 2019-03-15T23:00:00 | 4 | 1000 |  |  |
| 4034 | · · · Make test release | 0 | 2019-03-12 | 2019-03-15 | 2019-03-11T23:00:00 2019-03-14T23:00:00, 2019-03-11T23:00:00 2019-03-14T23:00:00, 2019-03-11T23:00:00 2019-03-14T23:00:00 | 3 | 1200 |  |  |
| 4035 | · · · Send invitation email | 0 | 2019-03-15 | 2019-03-16 | 2019-03-14T23:00:00 2019-03-14T23:00:00, 2019-03-13T00:00:00 2019-03-13T00:00:00, 2019-03-12T00:00:00 2019-03-12T00:00:00 | 0 | 250 |  |  |
| 4036 | · · · Celebrate launch | 0 | 2019-03-12 | 2019-03-13 | 2019-03-11T23:00:00 2019-03-12T23:00:00, 2019-03-11T23:00:00 2019-03-12T23:00:00, 2019-03-11T23:00:00 2019-03-12T23:00:00 | 1 | 2500 |  |  |

Links (id, fromTask, toTask, lag):
- 1 11 15 2
- 2 12 15
- 3 13 15
- 4 14 15
- 5 15 21
- 7 21 22
- 8 22 23
- 9 23 24
- 10 24 25
- 11 31 33
- 12 400 401
- 13 401 402
- 14 402 403
- 15 3 4
- 16 41 45
- 17 42 45
- 18 43 45
- 19 44 45
- 20 4034 4035
